# DUB-12 Building 4

Schedule from Primavera P6, 2025-09-04 to 2026-12-18, A marks actual dates.
Must finish by 2026-12-18

## Schedule

| ID | Activity | Duration | Start | Finish | Predecessors | Complete | Remaining | Planned start | Planned finish | Total float |
| --- | --- | --- | --- | --- | --- | --- | --- | --- | --- | --- |
|  | **DUB-12 Building 4** |  | 2025-09-04 | 2026-12-18 |  |  |  |  |  |  |
|  | **1. Design** |  | 2025-09-04 | 2026-06-30 |  |  |  |  |  |  |
| A1000 | Design freeze MER1 | 0d | 2025-09-04 A | 2025-10-14 A |  | 100% |  | 2025-09-04 | 2025-10-15 |  |
| A1001 | Design freeze Colo | 0d | 2025-09-10 A | 2025-10-28 A |  | 100% |  | 2025-09-10 | 2025-10-30 |  |
| A1004 | Commissioning strategy sign-off | 0d | 2025-10-01 A | 2025-11-28 A |  | 100% |  | 2025-10-01 | 2025-11-30 |  |
| A1002 | Security model coordination | 0d | 2026-03-03 A | 2026-06-30 |  |  | 0d | 2026-03-01 | 2026-06-30 | 30d |
| A1003 | Earthing schedule design | 0d | 2026-03-20 A | 2026-05-10 |  |  | 0d | 2026-03-15 | 2026-05-10 | 10d |
|  | **2. Procurement** |  | 2025-11-01 | 2026-05-15 |  |  |  |  |  |  |
| A1005 | Procure MER1 distribution panels | 0d | 2025-11-01 A | 2026-01-14 A | A1000 | 100% |  | 2025-11-01 | 2026-01-15 |  |
| A1006 | Procure UPS modules | 0d | 2025-11-01 A | 2026-01-29 A |  | 100% |  | 2025-11-01 | 2026-01-30 |  |
| A1009 | Procure fire alarm panels | 0d | 2025-12-01 A | 2026-02-14 A |  | 100% |  | 2025-12-01 | 2026-02-15 |  |
| A1007 | Procure AHUs | 0d | 2026-02-05 A | 2026-04-30 |  |  | 0d | 2026-02-01 | 2026-04-30 | 15d |
| A1008 | Procure HRUs | 0d | 2026-02-20 A | 2026-05-15 |  |  | 0d | 2026-02-15 | 2026-05-15 | 15d |
|  | **3. MER1 Construction** |  | 2026-03-10 | 2026-08-15 |  |  |  |  |  |  |
| A1120 | MER1 cable tray containment | 0d | 2026-03-10 A | 2026-05-12 |  |  | 0d | 2026-03-01 | 2026-05-12 | 2d |
| A1100 | MER1-AHU-01 install | 0d | 2026-04-15 | 2026-05-20 |  |  |  |  |  | 3d |
| A1010 | MER1-PNL-01 install + energise | 0d | 2026-04-25 A | 2026-05-29 | A1005 |  | 0d | 2026-04-20 | 2026-05-29 | 0d |
| A1020 | MER1-PNL-02 install + energise | 0d | 2026-04-28 A | 2026-06-02 |  |  | 0d | 2026-04-22 | 2026-06-02 | 5d |
| A1030 | MER1-UPM-01 commissioning | 0d | 2026-05-15 A | 2026-06-15 | A1011, A1006, A1020 |  | 0d | 2026-05-01 | 2026-06-15 | 10d |
| A1140 | MER1 LV distribution checks | 0d | 2026-05-18 A | 2026-06-20 |  |  | 0d | 2026-05-10 | 2026-06-20 | 8d |
| A1011 | MER1-PNL-01 SAT testing | 0d | 2026-05-20 A | 2026-05-24 | A1010 |  | 0d | 2026-05-05 | 2026-05-24 | 5d |
| A1110 | MER1-AHU-02 install | 0d | 2026-05-28 | 2026-06-25 |  |  |  |  |  | 3d |
| A1040 | MER1-UPM-02 commissioning | 0d | 2026-06-01 | 2026-07-10 |  |  |  |  |  | 10d |
| A1130 | MER1 generator commissioning | 0d | 2026-07-01 | 2026-08-15 |  |  |  |  |  | 20d |

| ID | Activity | Duration | Start | Finish | Predecessors | Complete | Remaining | Planned start | Planned finish | Total float |
| --- | --- | --- | --- | --- | --- | --- | --- | --- | --- | --- |
|  | **4. Colo Construction** |  | 2026-02-01 | 2026-06-05 |  |  |  |  |  |  |
| A2030 | Colo CRAC commissioning | 0d | 2026-02-01 A | 2026-04-12 A |  | 100% |  | 2026-02-01 | 2026-04-15 |  |
| A2040 | Colo EWSD distribution energise | 0d | 2026-02-10 A | 2026-04-18 A |  | 100% |  | 2026-02-10 | 2026-04-20 |  |
| A2035 | Colo CRAC #2 commissioning | 0d | 2026-02-15 A | 2026-04-21 A |  | 100% |  | 2026-02-15 | 2026-04-22 |  |
| A2110 | Colo containment QC | 0d | 2026-03-01 A | 2026-04-24 A |  | 100% |  | 2026-03-01 | 2026-04-25 |  |
| A2050 | Colo electrical heater install | 0d | 2026-04-10 A | 2026-05-18 |  |  | 0d | 2026-04-01 | 2026-05-18 | 6d |
| A2100 | COLO-EWS-01 earthing install | 0d | 2026-04-20 A | 2026-05-22 | A1003 |  | 0d | 2026-04-10 | 2026-05-22 | 0d |
| A2120 | Colo fire alarm install | 0d | 2026-04-20 A | 2026-06-05 |  |  | 0d | 2026-04-12 | 2026-06-05 | 9d |
| A2010 | COLO-HRU-01 install | 0d | 2026-05-02 A | 2026-05-29 | A2100 |  | 0d | 2026-04-25 | 2026-05-29 | 0d |
| A2020 | COLO-HRU-02 install | 0d | 2026-05-05 A | 2026-06-01 | A2010 |  | 0d | 2026-04-28 | 2026-06-01 | 0d |
|  | **5. Commissioning** |  | 2026-06-15 | 2026-09-15 |  |  |  |  |  |  |
| A3000 | MER1 IST dry-run | 0d | 2026-06-15 | 2026-07-15 | A1030, A1100 |  |  |  |  | 15d |
| A3010 | Colo IST dry-run | 0d | 2026-06-20 | 2026-07-20 | A2020 |  |  |  |  | 15d |
| A3030 | BMS commissioning | 0d | 2026-07-10 | 2026-08-20 |  |  |  |  |  | 12d |
| A3060 | SCADA integration test | 0d | 2026-07-15 | 2026-08-25 |  |  |  |  |  | 12d |
| A3040 | Witness commissioning MER1 | 0d | 2026-07-20 | 2026-08-10 |  |  |  |  |  | 12d |
| A3050 | Witness commissioning Colo | 0d | 2026-07-25 | 2026-08-15 |  |  |  |  |  | 12d |
| A3020 | Integrated systems test (L5) | 0d | 2026-08-01 | 2026-09-15 | A1010, A2010, A3000, A3010 |  |  |  |  | 0d |
|  | **6. Handover** |  | 2026-09-20 | 2026-12-18 |  |  |  |  |  |  |
| A4000 | Client witness sign-off | 0d | 2026-09-20 | 2026-10-10 | A3020 |  |  |  |  | 25d |
| A4010 | L5 handover pack | 0d | 2026-10-15 | 2026-11-15 | A4000 |  |  |  |  | 25d |
| A4020 | Snag close-out | 0d | 2026-11-01 | 2026-11-30 | A4010 |  |  |  |  | 20d |
| A4030 | Final handover | 0d | 2026-12-01 | 2026-12-18 | A4020 |  |  |  |  | 20d |
